# Projet Complet

How a schedule from MS Project changed from version to version. A marks actual dates.

## Version 1 (saved 2017-11-09, file 05_01.mpp)

Note of the change: Màj 26

| ID | WBS | Task | Duration | Start | Finish | Predecessors | Total float |
| --- | --- | --- | --- | --- | --- | --- | --- |
| 1 |  | Début de projet | 0d | 2017-11-13 | 2017-11-13 |  | 0d |
| 2 | 2 | **Initiation** | 6d | 2017-11-13 | 2017-11-20 |  | 0d |
| 3 |  | Compléter l'étude de cas | 5d | 2017-11-13 | 2017-11-17 | 1 | 0d |
| 4 |  | Présenter l'étude de cas au committé exécutif | 1d | 2017-11-20 | 2017-11-20 | 3 | 0d |
| 5 |  | Approbation de l'étude de cas | 0d | 2017-11-20 | 2017-11-20 | 4 | 0d |
| 6 | 3 | **Définition** | 11d | 2017-11-21 | 2017-12-05 |  | 0d |
| 7 |  | Préparer la charte de projet | 5d | 2017-11-21 | 2017-11-27 | 5 | 0d |
| 8 |  | Approuver la charte de projet | 2d | 2017-11-28 | 2017-11-29 | 7 | 3d |
| 9 |  | Développer l'équipe de travail | 5d | 2017-11-28 | 2017-12-04 | 7 | 0d |
| 10 |  | Procéder à la rencontre de démarrage du projet | 1d | 2017-12-05 | 2017-12-05 | 9, 8 | 0d |
| 11 |  | Début du prototypage | 0d | 2017-12-05 | 2017-12-05 | 10 | 0d |
| 12 | 4 | **Planification du projet** | 237d | 2017-12-06 | 2018-11-06 |  | 0d |
| 13 | 4.1 | **Prototype 1** | 72d | 2017-12-06 | 2018-03-20 |  | 0d |
| 14 | 4.1.1 | **Approvisionnement** | 20d | 2017-12-06 | 2018-01-05 |  | 0d |
| 15 |  | Développer les plans de matières premières | 5d | 2017-12-06 | 2017-12-12 | 11 | 10d |
| 16 |  | Faire un appel d'offre sur le marché | 15d | 2017-12-06 | 2017-12-28 | 11 | 0d |
| 17 |  | Sélectionner le fournisseur | 5d | 2017-12-29 | 2018-01-05 | 16, 15 | 0d |
| 18 | 4.1.2 | **Ingénierie de produit** | 13d | 2017-12-06 | 2017-12-22 |  | 7d |
| 19 |  | Développer le design préliminaire | 10d | 2017-12-06 | 2017-12-19 | 10 | 7d |
| 20 |  | Compléter l'étude de faisabilité | 5d | 2017-12-18 | 2017-12-22 | 19FS-2d | 7d |
| 21 |  | Élaborer le processus de fabrication du prototype | 5d | 2017-12-18 | 2017-12-22 | 20SS | 7d |
| 22 | 4.1.3 | **Production** | 31d | 2018-01-06 | 2018-02-19 |  | 0d |
| 23 |  | Assembler le matériel nécessaire | 10d | 2018-01-06 | 2018-01-17 | 17, 21 | 1d |
| 24 |  | Développer le processus de production | 5d | 2018-01-18 | 2018-01-23 | 23 | 1d |
| 25 |  | Faire les changements nécessaires à la production | 6d | 2018-01-24 | 2018-01-30 | 24 | 1d |
| 26 |  | Compléter le prototype | 15d | 2018-01-31 | 2018-02-16 | 25 | 1d |
| 27 | 4.1.3.5 | **Qualité** | 2d | 2018-02-16 | 2018-02-19 |  | 0d |
| 28 |  | Inspecter le produit | 2d | 2018-02-16 | 2018-02-19 | 26FF+1d | 0d |
| 29 |  | Approuver le produit pour expédition au client | 0d | 2018-02-19 | 2018-02-19 | 28 | 0d |
| 30 | 4.1.4 | **Marketing** | 21d | 2018-02-20 | 2018-03-20 |  | 0d |
| 31 |  | Élaborer le plan marketing | 10d | 2018-02-20 | 2018-03-05 | 19, 29 | 0d |
| 32 |  | Présenter le prototype au client | 1d | 2018-03-06 | 2018-03-06 | 31 | 0d |
| 33 |  | Aviser des changements recquis | 5d | 2018-03-07 | 2018-03-13 | 32 | 0d |
| 34 |  | Compléter le rapport du feedback client | 5d | 2018-03-14 | 2018-03-20 | 33 | 5d |
| 35 | 4.2 | **Prototype 2** | 87d | 2018-03-14 | 2018-07-12 |  | 0d |
| 36 | 4.2.1 | **Approvisionnement** | 20d | 2018-03-14 | 2018-04-10 |  | 0d |
| 37 |  | Développer les plans de matières premières | 5d | 2018-03-21 | 2018-03-27 | 33, 34 | 5d |
| 38 |  | Faire un appel d'offre sur le marché | 15d | 2018-03-14 | 2018-04-03 | 33 | 0d |
| 39 |  | Sélectionner le fournisseur | 5d | 2018-04-04 | 2018-04-10 | 38, 37 | 0d |
| 40 | 4.2.2 | **Ingénierie de produit** | 13d | 2018-03-14 | 2018-03-30 |  | 7d |
| 41 |  | Développer le design préliminaire | 10d | 2018-03-14 | 2018-03-27 | 33 | 7d |
| 42 |  | Compléter l'étude de faisabilité | 5d | 2018-03-26 | 2018-03-30 | 41FS-2d | 7d |
| 43 |  | Élaborer le processus de fabrication du prototype | 5d | 2018-03-26 | 2018-03-30 | 42SS | 7d |
| 44 | 4.2.3 | **Production** | 46d | 2018-04-11 | 2018-06-13 |  | 0d |
| 45 |  | Assembler le matériel nécessaire | 10d | 2018-04-11 | 2018-04-24 | 39, 43 | 0d |
| 46 |  | Développer le processus de production | 5d | 2018-04-25 | 2018-05-01 | 45 | 0d |
| 47 |  | Faire les changements nécessaires à la production | 10d | 2018-05-02 | 2018-05-15 | 46 | 0d |
| 48 |  | Compléter le prototype | 20d | 2018-05-16 | 2018-06-12 | 47 | 0d |
| 49 | 4.2.3.5 | **Qualité** | 2d | 2018-06-12 | 2018-06-13 |  | 0d |
| 50 |  | Inspecter le produit | 2d | 2018-06-12 | 2018-06-13 | 48FF+1d | 0d |
| 51 |  | Approuver le produit pour expédition au client | 0d | 2018-06-13 | 2018-06-13 | 50 | 0d |
| 52 | 4.2.4 | **Marketing** | 21d | 2018-06-14 | 2018-07-12 |  | 0d |
| 53 |  | Élaborer le plan marketing | 10d | 2018-06-14 | 2018-06-27 | 39, 51 | 0d |
| 54 |  | Présenter le prototype au client | 1d | 2018-06-28 | 2018-06-28 | 53 | 0d |
| 55 |  | Aviser des changements recquis | 5d | 2018-06-29 | 2018-07-05 | 54 | 0d |
| 56 |  | Compléter le rapport du feedback client | 5d | 2018-07-06 | 2018-07-12 | 55 | 5d |
| 57 | 4.3 | **Prototype Final** | 88d | 2018-07-06 | 2018-11-06 |  | 0d |
| 58 | 4.3.1 | **Approvisionnement** | 20d | 2018-07-06 | 2018-08-02 |  | 0d |
| 59 |  | Développer les plans de matières premières | 5d | 2018-07-13 | 2018-07-19 | 55, 56 | 5d |
| 60 |  | Faire un appel d'offre sur le marché | 15d | 2018-07-06 | 2018-07-26 | 55 | 0d |
| 61 |  | Sélectionner le fournisseur | 5d | 2018-07-27 | 2018-08-02 | 60, 59 | 0d |
| 62 | 4.3.2 | **Ingénierie de produit** | 13d | 2018-07-06 | 2018-07-24 |  | 7d |
| 63 |  | Développer le design préliminaire | 10d | 2018-07-06 | 2018-07-19 | 55 | 7d |
| 64 |  | Compléter l'étude de faisabilité | 5d | 2018-07-18 | 2018-07-24 | 63FS-2d | 7d |
| 65 |  | Élaborer le processus de fabrication du prototype | 5d | 2018-07-18 | 2018-07-24 | 64SS | 7d |
| 66 | 4.3.3 | **Production** | 41d | 2018-08-03 | 2018-09-28 |  | 0d |
| 67 |  | Assembler le matériel nécessaire | 10d | 2018-08-03 | 2018-08-16 | 61, 65 | 0d |
| 68 |  | Développer le processus de production | 5d | 2018-08-17 | 2018-08-23 | 67 | 0d |
| 69 |  | Faire les changements nécessaires à la production | 6d | 2018-08-24 | 2018-08-31 | 68 | 0d |
| 70 |  | Compléter le prototype | 20d | 2018-09-03 | 2018-09-28 | 69 | 0d |

| ID | WBS | Task | Duration | Start | Finish | Predecessors | Total float |
| --- | --- | --- | --- | --- | --- | --- | --- |
| 71 | 4.3.4 | **Qualité** | 2d | 2018-09-28 | 2018-10-01 |  | 0d |
| 72 |  | Inspecter le produit | 2d | 2018-09-28 | 2018-10-01 | 70FF+1d | 0d |
| 73 |  | Approuver le produit pour expédition au client | 0d | 2018-10-01 | 2018-10-01 | 72 | 0d |
| 74 | 4.3.5 | **Marketing** | 26d | 2018-10-02 | 2018-11-06 |  | 0d |
| 75 |  | Élaborer le plan marketing | 10d | 2018-10-02 | 2018-10-15 | 55, 73 | 0d |
| 76 |  | Tampon - Attente interne | 5d | 2018-10-16 | 2018-10-22 | 75 | 0d |
| 77 |  | Présenter le prototype au client | 1d | 2018-10-23 | 2018-10-23 | 76 | 0d |
| 78 |  | Aviser des changements recquis | 5d | 2018-10-24 | 2018-10-30 | 77 | 0d |
| 79 |  | Compléter le rapport du feedback client | 5d | 2018-10-31 | 2018-11-06 | 78 | 0d |
| 80 |  | Approbation du client du prototype et transfer à la production finale | 0d | 2018-11-06 | 2018-11-06 | 79 | 0d |
| 81 | 5 | **Execution** | 87d | 2018-11-02 | 2019-03-04 |  | 0d |
| 82 | 5.1 | **Ingénierie de produit** | 60d | 2018-11-07 | 2019-01-29 |  | 24d |
| 83 |  | Finaliser les plans de produits | 15d | 2018-11-07 | 2018-11-27 | 80 | 24d |
| 84 |  | Préprarer la cédule de maintenance | 10d | 2018-11-28 | 2018-12-11 | 83 | 24d |
| 85 |  | Élaborer le processus du fabrication | 20d | 2018-12-12 | 2019-01-08 | 84 | 24d |
| 86 |  | Formation des techniciens procédés | 15d | 2019-01-09 | 2019-01-29 | 85 | 24d |
| 87 |  | Compléter fichier du produit pour transfer à la production | 10d | 2019-01-09 | 2019-01-22 | 85 | 29d |
| 88 | 5.2 | **Qualité** | 16d | 2018-11-07 | 2018-11-28 |  | 58d |
| 89 |  | Compléter l'approbation client du produit | 1d | 2018-11-07 | 2018-11-07 | 80 | 58d |
| 90 |  | Élaborer les critères d'inspection | 5d | 2018-11-08 | 2018-11-14 | 89 | 58d |
| 91 |  | Formation des inspecteurs qualités | 10d | 2018-11-15 | 2018-11-28 | 90 | 58d |
| 92 | 5.3 | **Ressources humaines** | 30d | 2018-11-07 | 2018-12-18 |  | 54d |
| 93 |  | Embaucher les nouveaux opérateurs | 20d | 2018-11-07 | 2018-12-04 | 80 | 54d |
| 94 |  | Développer le plan de formation | 15d | 2018-11-07 | 2018-11-27 | 93SS | 54d |
| 95 |  | Former les nouveaux opérateurs | 15d | 2018-11-28 | 2018-12-18 | 94 | 54d |
| 96 | 5.4 | **Approvisionnement** | 87d | 2018-11-02 | 2019-03-04 |  | 0d |
| 97 |  | Développer les plans finaux des requis de matières premières | 10d | 2018-11-02 | 2018-11-15 | 80FS-3d | 0d |
| 98 |  | Faire appel d'offres | 15d | 2018-11-16 | 2018-12-06 | 97 | 0d |
| 99 |  | Choisir les fournisseurs | 15d | 2018-12-07 | 2018-12-27 | 98 | 0d |
| 100 |  | Développer le contrat | 20d | 2018-12-28 | 2019-01-24 | 99 | 0d |
| 101 |  | Revoir le contrat par le département législatif | 20d | 2019-01-25 | 2019-02-21 | 100 | 0d |
| 102 |  | Signer et approuver le contrat | 5d | 2019-02-22 | 2019-02-28 | 101 | 0d |
| 103 |  | Mettre en place le plan d'approvisionnement | 2d | 2019-03-01 | 2019-03-04 | 102, 107 | 0d |
| 104 | 5.5 | **Département de production** | 69d | 2018-11-27 | 2019-03-04 |  | 0d |
| 105 |  | Accepter le design de produit | 0d | 2018-11-27 | 2018-11-27 | 83 | 49d |
| 106 |  | Développer plan de production | 10d | 2019-01-09 | 2019-01-22 | 85, 91 | 29d |
| 107 |  | Approuver le plan d'approvisionnement | 0d | 2019-02-28 | 2019-02-28 | 102 | 0d |
| 108 |  | Projet transféré aux opérations et début de la prouction | 0d | 2019-03-04 | 2019-03-04 | 107, 103, 95 | 0d |
| 109 |  | Fin de projet | 0d | 2019-03-04 | 2019-03-04 | 86, 87, 105, 106, 108 | 0d |

## Version 2 (data date 2017-12-29, saved 2017-11-09, file 05_03.mpp)

Note of the change: Màj 26

Last finish stays 2019-03-04. Complete tasks 0 → 14.

Changed:

| ID | Task | Start | Finish | Complete | Total float |
| --- | --- | --- | --- | --- | --- |
| 1 | Début de projet | 2017-11-13 A | 2017-11-13 A | 0% → 100% | 0d → none |
| 2 | **Initiation** | 2017-11-13 A | 2017-11-20 A | 0% → 100% | 0d → none |
| 3 | Compléter l'étude de cas | 2017-11-13 A | 2017-11-17 A | 0% → 100% | 0d → none |
| 4 | Présenter l'étude de cas au committé exécutif | 2017-11-20 A | 2017-11-20 A | 0% → 100% | 0d → none |
| 5 | Approbation de l'étude de cas | 2017-11-20 A | 2017-11-20 A | 0% → 100% | 0d → none |
| 6 | **Définition** | 2017-11-21 A | 2017-12-05 A | 0% → 100% | 0d → none |
| 7 | Préparer la charte de projet | 2017-11-21 A | 2017-11-27 A | 0% → 100% | 0d → none |
| 8 | Approuver la charte de projet | 2017-11-28 A | 2017-11-29 A | 0% → 100% | 3d → none |
| 9 | Développer l'équipe de travail | 2017-11-28 A | 2017-12-04 A | 0% → 100% | 0d → none |
| 10 | Procéder à la rencontre de démarrage du projet | 2017-12-05 A | 2017-12-05 A | 0% → 100% | 0d → none |
| 11 | Début du prototypage | 2017-12-05 A | 2017-12-05 A | 0% → 100% | 0d → none |
| 12 | **Planification du projet** | 2017-12-06 A |  | 0% → 12% |  |
| 13 | **Prototype 1** | 2017-12-06 A |  | 0% → 39% | 0d → 5d |
| 14 | **Approvisionnement** | 2017-12-06 A |  | 0% → 84% |  |
| 15 | Développer les plans de matières premières | 2017-12-06 A | 2017-12-12 A | 0% → 100% | 10d → none |
| 16 | Faire un appel d'offre sur le marché | 2017-12-06 A | 2017-12-28 A | 0% → 100% | 0d → none |
| 17 | Sélectionner le fournisseur | 2017-12-29 A |  | 0% → 20% |  |
| 18 | **Ingénierie de produit** | 2017-12-06 A | 2017-12-22 A | 0% → 100% | 7d → none |
| 19 | Développer le design préliminaire | 2017-12-06 A | 2017-12-19 A | 0% → 100% | 7d → none |
| 20 | Compléter l'étude de faisabilité | 2017-12-18 A | 2017-12-22 A | 0% → 100% | 7d → none |
| 21 | Élaborer le processus de fabrication du prototype | 2017-12-18 A | 2017-12-22 A | 0% → 100% | 7d → none |
